Schedule from MS Project, 2018-04-26 to 2018-06-07, A marks actual dates.

## Calendars

- 标准: Mon-Fri 08:00-12:00, 13:00-17:00; Sat-Sun off.

## Resources

| Resource |
| --- |
| Roger |
| Michael |
| Damon |
| Kim |
| Grubby |
| Joe |

## Schedule

| ID | WBS | Task | Type | Duration | Start | Finish | Complete | Remaining | Total slack | Resources | Work | Actual work |
| --- | --- | --- | --- | --- | --- | --- | --- | --- | --- | --- | --- | --- |
| 1 | 1 | **开发** |  | 24d | 2018-05-07 A | 2018-06-07 | 41% | 14.21d | 0d |  | 714.16h | 266.16h |
| 2 | 1.1 | **SSO** |  | 23d | 2018-05-08 A | 2018-06-07 | 23% | 17.69d | 0d |  | 184h | 48h |
| 3 | 1.1.1 | SSO 配置页面 | manual | 2d | 2018-05-08 A | 2018-05-09 A | 100% |  |  | Roger | 16h | 16h |
| 4 | 1.1.2 | 搭建SAML 和JWT Server | manual | 1d | 2018-05-10 A | 2018-05-10 A | 100% |  |  | Roger | 8h | 8h |
| 5 | 1.1.3 | 方案设计 | manual | 2d | 2018-05-08 A | 2018-05-09 | 50% | 1d |  | Damon [50%] | 12h | 8h |
| 6 | 1.1.4 | 新登录界面的开发 | manual | 2d | 2018-05-10 A | 2018-05-11 | 50% | 1d |  | Damon [50%] | 12h | 8h |
| 7 | 1.1.5 | Portal 登录 | manual | 2d | 2018-05-14 A | 2018-05-15 | 50% | 1d |  | Damon [50%] | 12h | 8h |
| 8 | 1.1.6 | Secure登录 | manual | 3d | 2018-05-16 | 2018-05-18 |  |  |  | Damon [50%] | 12h |  |
| 9 | 1.1.7 | Agent Console 网页版 | manual | 1d | 2018-05-21 | 2018-05-21 |  |  |  | Damon | 8h |  |
| 10 | 1.1.8 | Agent Console 桌面版 | manual | 2d | 2018-05-22 | 2018-05-23 |  |  |  | Damon | 16h |  |
| 11 | 1.1.9 | 联调+自测 | manual | 2d | 2018-05-24 | 2018-05-25 |  |  |  | Damon | 16h |  |
| 12 | 1.1.10 | Partner SSO 登录 | manual | 2d | 2018-06-06 | 2018-06-07 |  |  |  | Damon | 16h |  |
| 13 | 1.1.11 | 配置页面挪到Account | manual | 2d | 2018-05-29 | 2018-05-30 |  |  |  | Roger | 16h |  |
| 14 | 1.1.12 | **SSO 手机开发** |  | 4d | 2018-05-25 | 2018-05-30 |  |  | 0d |  | 40h |  |
| 15 | 1.1.12.1 | 基本方案确定+环境准备 | manual | 2d | 2018-05-25 | 2018-05-28 |  |  |  | Kim | 16h |  |
| 16 | 1.1.12.2 | IOS | manual | 1d | 2018-05-28 | 2018-05-28 |  |  |  | Kim | 8h |  |
| 17 | 1.1.12.3 | Andriod | manual | 1d | 2018-05-29 | 2018-05-29 |  |  |  | Kim | 8h |  |
| 18 | 1.1.12.4 | Code reivew + 自测 | manual | 1d | 2018-05-30 | 2018-05-30 |  |  |  | Kim | 8h |  |
| 19 | 1.2 | **API 接口** |  | 21d | 2018-05-07 A | 2018-06-04 | 65% | 7.25d | 0d |  | 362.16h | 218.16h |
| 20 | 1.2.1 | **LiveChat API** |  | 19d | 2018-05-07 A | 2018-05-31 | 75% | 4.75d | 0d |  | 88h | 64h |
| 21 | 1.2.1.1 | Department | manual | 2d | 2018-05-07 A | 2018-05-08 A | 100% |  |  | Joe | 16h | 16h |
| 22 | 1.2.1.2 | Agent | manual | 2d | 2018-05-07 A | 2018-05-08 A | 100% |  |  | Grubby | 16h | 16h |
| 23 | 1.2.1.3 | Canned Message | manual | 1d | 2018-05-09 A | 2018-05-09 A | 100% |  |  | Grubby [50%] | 4h | 4h |
| 24 | 1.2.1.4 | Canned Message Category | manual | 1d | 2018-05-09 A | 2018-05-09 A | 100% |  |  | Grubby [50%] | 4h | 4h |
| 25 | 1.2.1.5 | Auto Allocation | manual | 1d | 2018-05-09 | 2018-05-09 |  |  |  | Joe [50%] | 4h |  |
| 26 | 1.2.1.6 | Custom Away Status | manual | 1d | 2018-05-09 | 2018-05-09 |  |  |  | Joe [50%] | 4h |  |
| 27 | 1.2.1.7 | Conversion | manual | 1d | 2018-05-10 A | 2018-05-10 A | 100% |  |  | Grubby [33%] | 2.64h | 2.64h |
| 28 | 1.2.1.8 | Visitor Segmentation | manual | 1d | 2018-05-10 A | 2018-05-10 A | 100% |  |  | Grubby [33%] | 2.64h | 2.64h |
| 29 | 1.2.1.9 | Visitor SSO Settings | manual | 1d | 2018-05-10 A | 2018-05-10 A | 100% |  |  | Grubby [34%] | 2.72h | 2.72h |
| 30 | 1.2.1.10 | Site Config | manual | 1d | 2018-05-31 | 2018-05-31 |  |  |  | Kim | 8h |  |
| 31 | 1.2.1.11 | ban | manual | 1d | 2018-05-18 A | 2018-05-18 A | 100% |  |  |  |  |  |
| 32 | 1.2.1.12 | Campaign | manual | 2d | 2018-05-21 A | 2018-05-22 A | 100% |  |  | Joe | 16h | 16h |
| 33 | 1.2.1.13 | ban + Campaign 自测 | manual | 1d | 2018-05-23 | 2018-05-23 |  |  |  | Joe | 8h |  |

Notes:
- 5: 只有一半时间在这个项目
- 6: 只有一半时间在这个项目
- 7: 只有一半时间在这个项目
- 8: 计划是2天，实际周五还没有完全完成
- 9: 只有一半时间在这个项目
- 10: 只有一半时间在这个项目
- 12: 等partner 那边完成了再说
- 21: 搭好环境，代码还要评审
- 22: 搭好环境，代码还要评审

| ID | WBS | Task | Type | Duration | Start | Finish | Complete | Remaining | Total slack | Resources | Work | Actual work |
| --- | --- | --- | --- | --- | --- | --- | --- | --- | --- | --- | --- | --- |
| 34 | 1.2.2 | **Account API** |  | 17d | 2018-05-11 A | 2018-06-04 | 29% | 12.14d | 0d |  | 45.36h | 5.36h |
| 35 | 1.2.2.1 | Site Profile | manual | 1d | 2018-05-31 | 2018-05-31 |  |  |  | Kim | 8h |  |
| 36 | 1.2.2.2 | Group | manual | 1d | 2018-05-31 | 2018-05-31 |  |  |  | Kim | 8h |  |
| 37 | 1.2.2.3 | Permission | manual | 1d | 2018-06-04 | 2018-06-04 |  |  |  | Kim | 8h |  |
| 38 | 1.2.2.4 | Agent Permission | manual | 1d | 2018-06-04 | 2018-06-04 |  |  |  | Kim | 8h |  |
| 39 | 1.2.2.5 | Group Permission | manual | 1d | 2018-06-04 | 2018-06-04 |  |  |  | Kim | 8h |  |
| 40 | 1.2.2.6 | Ip Restriction | manual | 1d | 2018-05-11 A | 2018-05-11 A | 100% |  |  | Joe [33%] | 2.64h | 2.64h |
| 41 | 1.2.2.7 | Audit Log | manual | 1d | 2018-05-11 A | 2018-05-11 A | 100% |  |  | Joe [34%] | 2.72h | 2.72h |
| 42 | 1.2.3 | **Old API 迁移** |  | 5d | 2018-05-14 A | 2018-05-18 A | 100% |  |  |  | 76.8h | 76.8h |
| 43 | 1.2.3.1 | Chats | manual | 1d | 2018-05-14 A | 2018-05-14 A | 100% |  |  | Grubby [33%] | 2.64h | 2.64h |
| 44 | 1.2.3.2 | Offline Messages | manual | 1d | 2018-05-14 A | 2018-05-14 A | 100% |  |  | Grubby [33%] | 2.64h | 2.64h |
| 45 | 1.2.3.3 | Visitors | manual | 1d | 2018-05-14 A | 2018-05-14 A | 100% |  |  | Grubby [34%] | 2.72h | 2.72h |
| 46 | 1.2.3.4 | Custom Variables | manual | 1d | 2018-05-14 A | 2018-05-14 A | 100% |  |  | Joe [20%] | 1.6h | 1.6h |
| 47 | 1.2.3.5 | Site status | manual | 1d | 2018-05-14 A | 2018-05-14 A | 100% |  |  | Joe [20%] | 1.6h | 1.6h |
| 48 | 1.2.3.6 | Conversions | manual | 1d | 2018-05-14 A | 2018-05-14 A | 100% |  |  | Joe [20%] | 1.6h | 1.6h |
| 49 | 1.2.3.7 | API 第一批次的Code Review + 代码修改 | manual | 2d | 2018-05-15 A | 2018-05-16 A | 100% |  |  | Grubby; Joe | 32h | 32h |
| 50 | 1.2.3.8 | API 第一批次的自测 +互测 | manual | 2d | 2018-05-17 A | 2018-05-18 A | 100% |  |  | Grubby; Joe | 32h | 32h |
| 51 | 1.2.4 | **Partner API** |  | 3d | 2018-05-21 | 2018-05-23 |  |  | 0d |  | 40h |  |
| 52 | 1.2.4.1 | Add Site | manual | 2d | 2018-05-21 | 2018-05-22 |  |  |  | Kim | 16h |  |
| 53 | 1.2.4.2 | Get Site | manual | 1d | 2018-05-23 | 2018-05-23 |  |  |  | Kim | 8h |  |
| 54 | 1.2.4.3 | Update site | manual | 1d | 2018-05-23 | 2018-05-23 |  |  |  | Kim | 8h |  |
| 55 | 1.2.4.4 | Paying | manual | 1d | 2018-05-23 | 2018-05-23 |  |  |  | Kim | 8h |  |
| 56 | 1.2.5 | **框架基础层** |  | 15d | 2018-05-07 A | 2018-05-25 | 71% | 4.41d | 0d |  | 112h | 72h |
| 57 | 1.2.5.1 | **权限认证** |  | 15d | 2018-05-07 A | 2018-05-25 A | 100% |  |  |  | 48h | 48h |
| 58 | 1.2.5.1.1 | Oauth 设计 | manual | 1d | 2018-05-07 A | 2018-05-07 A | 100% |  |  | Kim | 8h | 8h |
| 59 | 1.2.5.1.2 | Oauth 设计评审与修改 | manual | 1d | 2018-05-08 A | 2018-05-08 A | 100% |  |  | Kim | 8h | 8h |
| 60 | 1.2.5.1.3 | Oauth Server 校验用户身份 | manual | 2d | 2018-05-09 A | 2018-05-10 A | 100% |  |  | Kim | 16h | 16h |
| 61 | 1.2.5.1.4 | Code \token 生成以及处理逻辑 | manual | 2d | 2018-05-07 A | 2018-05-08 A | 100% |  |  |  |  |  |
| 62 | 1.2.5.1.5 | 授权End point | manual | 1d | 2018-05-07 A | 2018-05-07 A | 100% |  |  |  |  |  |
| 63 | 1.2.5.1.6 | Oauth Server code review + 问题修改 | manual | 1d | 2018-05-24 A | 2018-05-24 A | 100% |  |  | Kim | 8h | 8h |
| 64 | 1.2.5.1.7 | Oauth Server 自测 | manual | 1d | 2018-05-25 A | 2018-05-25 A | 100% |  |  | Kim | 8h | 8h |

Notes:
- 49: 原计划是1天，实际问题比较多，改到了5月16
- 60: 原计划开发5天，中间又改了方案，实际5月23日才完成

| ID | WBS | Task | Type | Duration | Start | Finish | Complete | Remaining | Total slack | Resources | Work | Actual work |
| --- | --- | --- | --- | --- | --- | --- | --- | --- | --- | --- | --- | --- |
| 65 | 1.2.5.2 | **API 限流** |  | 8d | 2018-05-16 A | 2018-05-25 | 38% | 5d | 0d |  | 64h | 24h |
| 66 | 1.2.5.2.1 | 方案设计 | manual | 1d | 2018-05-16 A | 2018-05-16 A | 100% |  |  | Roger | 8h | 8h |
| 67 | 1.2.5.2.2 | 方案验证 | manual | 2d | 2018-05-17 A | 2018-05-18 A | 100% |  |  | Roger | 16h | 16h |
| 68 | 1.2.5.2.3 | 验证完以后重新讨论方案 | manual | 1d | 2018-05-21 | 2018-05-21 |  |  |  | Roger | 8h |  |
| 69 | 1.2.5.2.4 | 开发 | manual | 2d | 2018-05-22 | 2018-05-23 |  |  |  | Roger | 16h |  |
| 70 | 1.2.5.2.5 | Code Review+自测 | manual | 2d | 2018-05-24 | 2018-05-25 |  |  |  | Roger | 16h |  |
| 71 | 1.3 | **Partner 管理系统** |  | 8d | 2018-05-21 | 2018-05-30 |  |  | 0d |  | 104h |  |
| 72 | 1.3.1 | 基本设计 | manual | 1d | 2018-05-21 | 2018-05-21 |  |  |  | Grubby | 8h |  |
| 73 | 1.3.2 | 基本框架搭建 | manual | 1d | 2018-05-22 | 2018-05-22 |  |  |  | Grubby | 8h |  |
| 74 | 1.3.3 | 登录 + 权限 | manual | 1d | 2018-05-23 | 2018-05-23 |  |  |  | Grubby | 8h |  |
| 75 | 1.3.4 | partner profile | manual | 1d | 2018-05-24 | 2018-05-24 |  |  |  | Grubby | 8h |  |
| 76 | 1.3.5 | Rebranding | manual | 1d | 2018-05-25 | 2018-05-25 |  |  |  | Grubby | 8h |  |
| 77 | 1.3.6 | Security | manual | 1d | 2018-05-28 | 2018-05-28 |  |  |  | Grubby | 8h |  |
| 78 | 1.3.7 | SSO | manual | 1d | 2018-05-24 | 2018-05-24 |  |  |  | Joe | 8h |  |
| 79 | 1.3.8 | Site Management | manual | 2d | 2018-05-25 | 2018-05-28 |  |  |  | Joe | 16h |  |
| 80 | 1.3.9 | Code Review+代码修改 | manual | 1d | 2018-05-29 | 2018-05-29 |  |  |  | Grubby; Joe | 16h |  |
| 81 | 1.3.10 | 代码互测+修改 | manual | 1d | 2018-05-30 | 2018-05-30 |  |  |  | Grubby; Joe | 16h |  |
| 82 | 1.4 | UI Integration | manual | 1d | 2018-05-24 | 2018-05-24 |  |  |  | Kim | 8h |  |
| 83 | 1.5 | **CSS & Branding** |  | 1d | 2018-05-28 | 2018-05-28 |  |  | 0d |  | 8h |  |
| 84 | 1.5.1 | 先看代码了解原来的方案 | manual | 1d | 2018-05-28 | 2018-05-28 |  |  |  | Roger | 8h |  |
| 85 | 1.5.2 | CSS | manual | 1d? | 2018-05-28 | 2018-05-28 |  |  |  |  |  |  |
| 86 | 1.5.3 | Branding | manual | 1d? | 2018-05-28 | 2018-05-28 |  |  |  |  |  |  |
| 87 | 1.6 | **Agent Console SDK** |  | 7d | 2018-05-28 | 2018-06-05 |  |  | 0d |  | 48h |  |
| 88 | 1.6.1 | 方案设计+评审确认 | manual | 1d | 2018-05-28 | 2018-05-28 |  |  |  | Damon | 8h |  |
| 89 | 1.6.2 | Agent Console 相关修改 | manual | 1d | 2018-05-29 | 2018-05-29 |  |  |  | Damon | 8h |  |
| 90 | 1.6.3 | 初始化+General | manual | 1d | 2018-05-30 | 2018-05-30 |  |  |  | Damon | 8h |  |
| 91 | 1.6.4 | Agent | manual | 1d | 2018-05-31 | 2018-05-31 |  |  |  | Damon | 8h |  |
| 92 | 1.6.5 | Visitor | manual | 1d | 2018-06-01 | 2018-06-01 |  |  |  | Damon [50%] | 4h |  |
| 93 | 1.6.6 | Chat | manual | 1d | 2018-06-04 | 2018-06-04 |  |  |  | Damon [50%] | 4h |  |
| 94 | 1.6.7 | Code Review + 修改 | manual | 1d | 2018-06-05 | 2018-06-05 |  |  |  | Damon | 8h |  |
| 95 | 2 | 测试 | manual | 1d? | 2018-04-26 | 2018-04-26 |  |  |  |  |  |  |
| 96 | 3 | Alpha | manual | 1d? | 2018-04-26 | 2018-04-26 |  |  |  |  |  |  |
| 97 | 4 | Beta | manual | 1d? | 2018-04-26 | 2018-04-26 |  |  |  |  |  |  |
| 98 | 5 | RC 测试 | manual | 1d? | 2018-04-26 | 2018-04-26 |  |  |  |  |  |  |

Notes:
- 85: 有稳定的代码以后再开发
